# SPM-ASSIGNMENT1

Schedule from MS Project, 2015-02-06 to 2015-08-20.

## Calendars

- Standard: Mon-Fri 08:00-12:00, 13:00-17:00; Sat-Sun off.

## Resources

| Resource |
| --- |
| Project Manager 1 |
| Project Manager 2 |
| Project Manager 3 |
| Requirement Engineer 1 |
| Requirement Engineer 4 |
| Requirement Engineer 5 |
| Requirement Engineer 6 |
| Requirement Engineer 7 |
| Requirement Engineer 8 |
| Requirement Engineer 102 |
| Requirement Engineer 103 |
| System Engineer1 |
| System Engineer2 |
| System Engineer3 |
| System Engineer6 |
| System Engineer7 |
| System Engineer8 |
| System Engineer204 |
| System Engineer205 |
| Programmer6 |
| Programmer7 |
| Programmer8 |
| Programmer9 |
| Programmer10 |
| Programmer201 |
| Programmer202 |
| Programmer203 |
| Programmer204 |
| Programmer205 |
| Test Engineer5 |
| Test Engineer6 |
| Test Engineer7 |
| Test Engineer8 |
| Test Engineer9 |
| Test Engineer10 |
| Test Engineer101 |
| Test Engineer102 |
| Test Engineer103 |
| Test Engineer104 |
| Test Engineer202 |
| Test Engineer203 |
| Test Engineer204 |
| Documentation Engineer1 |
| Documentation Engineer2 |
| Documentation Engineer6 |
| Documentation Engineer7 |
| Documentation Engineer8 |
| Documentation Engineer103 |
| Documentation Engineer104 |
| Documentation Engineer105 |
| Documentation Engineer203 |
| Documentation Engineer204 |
| Documentation Engineer205 |
| Project Manager 5 |
| Project Manager 4 |
| System Engineer411 |
| System Engineer410 |
| System Engineer409 |
| System Engineer412 |
| Programmer415 |
| Programmer414 |
| Programmer413 |
| Programmer412 |
| Test Engineer314 |
| Test Engineer313 |
| Test Engineer312 |

## Schedule

| ID | WBS | Task | Duration | Start | Finish | Predecessors | Total slack | Free slack | Resources | Work |
| --- | --- | --- | --- | --- | --- | --- | --- | --- | --- | --- |
| 1 | 1 | **Assignment-1** | 139.39d | 2015-02-06 | 2015-08-20 |  | 0d |  |  | 7029.12h |
| 2 | 1.1 | **Project Plan** | 9.28d | 2015-02-06 | 2015-02-19 |  | 0d |  |  | 333.36h |
| 3 | 1.1.1 | Write Plan | 0.39d | 2015-02-06 | 2015-02-06 |  | 0d |  | Project Manager 1 | 3.12h |
| 4 | 1.1.2 | **Review Plan** | 7.52d | 2015-02-06 | 2015-02-17 | 3 | 0d |  |  | 319.28h |
| 5 | 1.1.2.1 | Preparation for Review | 5.21d | 2015-02-06 | 2015-02-13 | 3 | 0d |  | Documentation Engineer1; Programmer6; Requirement Engineer 1; System Engineer1; Test Engineer5 | 208.4h |
| 6 | 1.1.2.2 | Review Meeting | 2.31d | 2015-02-13 | 2015-02-17 | 5 | 0d |  | Documentation Engineer1; Programmer6; Requirement Engineer 1; System Engineer1; Test Engineer5; Project Manager 1 | 110.88h |
| 7 | 1.1.3 | Rework | 1.37d | 2015-02-17 | 2015-02-19 | 6 | 0d |  | Project Manager 1 | 10.96h |
| 8 | 1.2 | **Requirements** | 6.8d | 2015-02-19 | 2015-03-02 | 7 | 0d |  |  | 330.88h |
| 9 | 1.2.1 | Write Requirements | 0.91d | 2015-02-19 | 2015-02-20 | 7 | 0d |  | Requirement Engineer 1; Requirement Engineer 4; Requirement Engineer 6; Requirement Engineer 8; Requirement Engineer 7; Requirement Engineer 5 | 43.44h |
| 10 | 1.2.2 | Write Use Case Model | 0.38d | 2015-02-20 | 2015-02-20 | 9 | 0d |  | Requirement Engineer 7; Requirement Engineer 103; Requirement Engineer 6; Requirement Engineer 8 | 12h |
| 11 | 1.2.3 | **Review Requirements/Use case model** | 5.17d | 2015-02-20 | 2015-02-27 | 9, 10 | 0d |  |  | 253.12h |
| 12 | 1.2.3.1 | Preparation for Requirement Review | 2.71d | 2015-02-20 | 2015-02-25 | 9, 10 | 0d |  | Programmer8; System Engineer7; Requirement Engineer 103; System Engineer6 | 86.72h |
| 13 | 1.2.3.2 | Requirement Review Meeting | 2.46d | 2015-02-25 | 2015-02-27 | 12 | 0d |  | System Engineer7; Programmer8; Requirement Engineer 103; Requirement Engineer 1; System Engineer6 | 98.4h |
| 14 | 1.2.3.3 | Preparation for Use case Model | 1.5d | 2015-02-20 | 2015-02-24 | 10 | 3.17d | 0d | Programmer7; Requirement Engineer 4; System Engineer2; Requirement Engineer 5 | 48h |
| 15 | 1.2.3.4 | Use case model Review Meeting | 0.5d | 2015-02-24 | 2015-02-24 | 14 | 3.17d |  | Programmer7; Requirement Engineer 4; Requirement Engineer 5; System Engineer2; Requirement Engineer 6 | 20h |
| 16 | 1.2.4 | Rework | 0.35d | 2015-02-27 | 2015-03-02 | 15, 13 | 0d |  | Requirement Engineer 1; Requirement Engineer 4; Requirement Engineer 6; Requirement Engineer 7; Requirement Engineer 102; Requirement Engineer 103; Requirement Engineer 5; Requirement Engineer 8 | 22.32h |
| 17 | 1.3 | **Analysis** | 6.18d | 2015-03-02 | 2015-03-10 | 16 | 0d |  |  | 241.36h |
| 18 | 1.3.1 | Write Analysis Document | 0.9d | 2015-03-02 | 2015-03-02 | 16 | 0d |  | System Engineer1; System Engineer2; System Engineer3; System Engineer6; System Engineer7; System Engineer8; System Engineer204 | 50.48h |
| 19 | 1.3.2 | **Review Analysis Document** | 4.96d | 2015-03-02 | 2015-03-09 | 18 | 0d |  |  | 173.12h |
| 20 | 1.3.2.1 | Preparation for Analysis Document | 3.16d | 2015-03-02 | 2015-03-06 | 18 | 0d |  | Requirement Engineer 4; System Engineer205; Programmer8; Requirement Engineer 1 | 101.12h |
| 21 | 1.3.2.2 | Review Meeting | 1.8d | 2015-03-06 | 2015-03-09 | 20 | 0d |  | Requirement Engineer 4; System Engineer205; Programmer8; Requirement Engineer 1; System Engineer1 | 72h |
| 22 | 1.3.3 | Rework | 0.32d | 2015-03-09 | 2015-03-10 | 21 | 0d |  | System Engineer1; System Engineer2; System Engineer3; System Engineer6; System Engineer7; System Engineer8; System Engineer204 | 17.76h |
| 23 | 1.4 | **Design** | 18.14d | 2015-03-10 | 2015-04-03 | 22 | 0d |  |  | 685.92h |
| 24 | 1.4.1 | Write DD | 1.27d | 2015-03-10 | 2015-03-11 | 22 | 0d |  | System Engineer1; System Engineer2; System Engineer3; System Engineer6; System Engineer7; System Engineer8; System Engineer204 | 71.04h |

| ID | WBS | Task | Duration | Start | Finish | Predecessors | Total slack | Resources | Work |
| --- | --- | --- | --- | --- | --- | --- | --- | --- | --- |
| 25 | 1.4.2 | **Review DD** | 13.3d | 2015-03-11 | 2015-03-30 | 24 | 0d |  | 461.04h |
| 26 | 1.4.2.1 | Preparation for DD | 8.87d | 2015-03-11 | 2015-03-24 | 24 | 0d | Requirement Engineer 4; System Engineer205; Programmer8; Requirement Engineer 1 | 283.84h |
| 27 | 1.4.2.2 | Review Meeting | 4.43d | 2015-03-24 | 2015-03-30 | 26 | 0d | System Engineer205; Programmer8; Requirement Engineer 1; System Engineer1; Requirement Engineer 4 | 177.2h |
| 28 | 1.4.3 | Rework | 0.48d | 2015-03-30 | 2015-03-31 | 27 | 0d | System Engineer1; System Engineer2; System Engineer3; System Engineer6; System Engineer7; System Engineer8; System Engineer204 | 26.88h |
| 29 | 1.4.4 | Write Data Model(DM) | 0.59d | 2015-03-31 | 2015-03-31 | 28 | 0d | System Engineer1; System Engineer2; System Engineer3; System Engineer6; System Engineer7; System Engineer8; System Engineer204 | 33.04h |
| 30 | 1.4.5 | **Review DM** | 2.19d | 2015-03-31 | 2015-04-03 | 29 | 0d |  | 76.64h |
| 31 | 1.4.5.1 | Preparation for DM | 1.37d | 2015-03-31 | 2015-04-02 | 29 | 0d | Requirement Engineer 4; Requirement Engineer 1; Programmer8; System Engineer205 | 43.84h |
| 32 | 1.4.5.2 | Review Meeting | 0.82d | 2015-04-02 | 2015-04-03 | 31 | 0d | Requirement Engineer 4; Requirement Engineer 1; Programmer8; System Engineer205; System Engineer1 | 32.8h |
| 33 | 1.4.6 | Rework | 0.31d | 2015-04-03 | 2015-04-03 | 32 | 0d | System Engineer1; System Engineer2; System Engineer3; System Engineer6; System Engineer7; System Engineer8; System Engineer204 | 17.28h |
| 34 | 1.5 | **Coding and Unit Test** | 55.7d | 2015-04-03 | 2015-06-22 | 33 | 0d |  | 3183.92h |
| 35 | 1.5.1 | Write Code | 16.4d | 2015-04-03 | 2015-04-27 | 33 | 0d | Programmer6; Programmer7; Programmer8; Programmer9; Programmer10; Programmer201; Programmer202; Programmer203; Programmer204 | 1180.8h |
| 36 | 1.5.2 | **Unit Test** | 15.88d | 2015-04-27 | 2015-05-19 | 35 | 0d |  | 1143.36h |
| 37 | 1.5.2.1 | Prepare/Execute Test Cases | 3.27d | 2015-04-27 | 2015-05-01 | 35 | 0d | Programmer6; Programmer7; Programmer8; Programmer9; Programmer10; Programmer201; Programmer202; Programmer203; Programmer204 | 235.44h |
| 38 | 1.5.2.2 | Fix Found Detects | 7.36d | 2015-05-01 | 2015-05-12 | 37 | 0d | Programmer6; Programmer7; Programmer8; Programmer9; Programmer10; Programmer201; Programmer202; Programmer203; Programmer204 | 529.6h |
| 39 | 1.5.2.3 | Test Fixed Detects | 5.25d | 2015-05-12 | 2015-05-19 | 38 | 0d | Programmer6; Programmer7; Programmer8; Programmer9; Programmer10; Programmer201; Programmer202; Programmer203; Programmer204 | 378.32h |
| 40 | 1.5.3 | **Code Inspection** | 23.42d | 2015-05-19 | 2015-06-22 | 39 | 0d |  | 859.76h |
| 41 | 1.5.3.1 | Preparation For Code Inspection | 14.76d | 2015-05-19 | 2015-06-09 | 39 | 0d | Test Engineer6; Programmer205; System Engineer1; Test Engineer5 | 472.32h |
| 42 | 1.5.3.2 | Code Inspection Meeting | 7.38d | 2015-06-09 | 2015-06-18 | 41 | 0d | Test Engineer6; Programmer205; System Engineer1; Test Engineer5; Programmer6 | 295.2h |
| 43 | 1.5.3.3 | Rework | 1.28d | 2015-06-18 | 2015-06-22 | 42 | 0d | Programmer6; Programmer7; Programmer8; Programmer9; Programmer10; Programmer201; Programmer202; Programmer203; Programmer204 | 92.24h |
| 44 | 1.6 | **System Integration Testing** | 18.51d | 2015-06-22 | 2015-07-16 | 16, 43 | 0d |  | 1055.68h |
| 45 | 1.6.1 | Write test plan (TP) | 2.42d | 2015-06-22 | 2015-06-24 | 16, 43 | 0d | Test Engineer5; Test Engineer6; Test Engineer7; Test Engineer8; Test Engineer9; Test Engineer10; Test Engineer101; Test Engineer102; Test Engineer103; Test Engineer104; Test Engineer202; Test Engineer203 | 232h |
| 46 | 1.6.2 | **Review TP** | 11.13d | 2015-06-24 | 2015-07-09 | 45 | 0d |  | 401.52h |
| 47 | 1.6.2.1 | Preparation for TP | 7.25d | 2015-06-24 | 2015-07-03 | 45 | 0d | Programmer204; Test Engineer204; Programmer205; System Engineer205 | 232h |
| 48 | 1.6.2.2 | Review TP meeting | 3.62d | 2015-07-03 | 2015-07-09 | 47 | 0d | Test Engineer204; System Engineer205; Programmer204; Test Engineer5; Programmer205 | 144.8h |
| 49 | 1.6.2.3 | Rework | 0.26d | 2015-07-09 | 2015-07-09 | 48 | 0d | Test Engineer5; Test Engineer6; Test Engineer7; Test Engineer8; Test Engineer9; Test Engineer10; Test Engineer101; Test Engineer102; Test Engineer103; Test Engineer104; Test Engineer202; Test Engineer203 | 24.72h |
| 50 | 1.6.3 | Execute TP (test cases) | 1.82d | 2015-07-09 | 2015-07-13 | 43, 49 | 0d | Test Engineer5; Test Engineer6; Test Engineer7; Test Engineer8; Test Engineer9; Test Engineer10; Test Engineer101; Test Engineer102; Test Engineer103; Test Engineer104; Test Engineer202; Test Engineer203 | 174.64h |
| 51 | 1.6.4 | Fix Found Defects | 2.29d | 2015-07-13 | 2015-07-15 | 50 | 0d | Programmer6; Programmer7; Programmer8; Programmer9; Programmer10; Programmer201; Programmer202; Programmer203; Programmer204 | 165.04h |
| 52 | 1.6.5 | Test Fixed Detects | 0.86d | 2015-07-15 | 2015-07-16 | 51 | 0d | Test Engineer5; Test Engineer6; Test Engineer7; Test Engineer8; Test Engineer9; Test Engineer10; Test Engineer101; Test Engineer102; Test Engineer103; Test Engineer104; Test Engineer202; Test Engineer203 | 82.48h |

| ID | WBS | Task | Duration | Start | Finish | Predecessors | Total slack | Resources | Work |
| --- | --- | --- | --- | --- | --- | --- | --- | --- | --- |
| 53 | 1.7 | **Load, Stress and Performance Testing** | 14.19d | 2015-07-16 | 2015-08-05 | 52, 16 | 0d |  | 780.08h |
| 54 | 1.7.1 | Write Test plan (TP) | 1.49d | 2015-07-16 | 2015-07-20 | 52, 16 | 0d | Test Engineer5; Test Engineer6; Test Engineer7; Test Engineer8; Test Engineer9; Test Engineer10; Test Engineer101; Test Engineer102; Test Engineer103; Test Engineer104; Test Engineer202; Test Engineer203 | 143.04h |
| 55 | 1.7.2 | **Review TP** | 9.1d | 2015-07-20 | 2015-07-31 | 54 | 0d |  | 325.84h |
| 56 | 1.7.2.1 | Preparation for TP | 5.96d | 2015-07-20 | 2015-07-28 | 54 | 0d | System Engineer205; Programmer204; Test Engineer204; Programmer205 | 190.72h |
| 57 | 1.7.2.2 | Review TP meeting | 2.97d | 2015-07-28 | 2015-07-31 | 56 | 0d | System Engineer205; Programmer204; Test Engineer204; Programmer205; Test Engineer5 | 118.8h |
| 58 | 1.7.2.3 | Rework | 0.17d | 2015-07-31 | 2015-07-31 | 57 | 0d | Test Engineer5; Test Engineer6; Test Engineer7; Test Engineer8; Test Engineer9; Test Engineer10; Test Engineer101; Test Engineer102; Test Engineer103; Test Engineer104; Test Engineer202; Test Engineer203 | 16.32h |
| 59 | 1.7.3 | Execute TP (test cases) | 1.62d | 2015-07-31 | 2015-08-03 | 55, 58 | 0d | Test Engineer5; Test Engineer6; Test Engineer7; Test Engineer8; Test Engineer9; Test Engineer10; Test Engineer101; Test Engineer102; Test Engineer103; Test Engineer104; Test Engineer202; Test Engineer203 | 155.2h |
| 60 | 1.7.4 | Fix Found Defects | 1.44d | 2015-08-03 | 2015-08-05 | 59 | 0d | Programmer6; Programmer7; Programmer8; Programmer9; Programmer10; Programmer201; Programmer202; Programmer203; Programmer204 | 104h |
| 61 | 1.7.5 | Test Fixed Defects | 0.54d | 2015-08-05 | 2015-08-05 | 60 | 0d | Test Engineer5; Test Engineer6; Test Engineer7; Test Engineer8; Test Engineer9; Test Engineer10; Test Engineer101; Test Engineer102; Test Engineer103; Test Engineer104; Test Engineer202; Test Engineer203 | 52h |
| 62 | 1.8 | **Documentation** | 7.18d | 2015-08-05 | 2015-08-14 | 16, 61 | 0d |  | 281.6h |
| 63 | 1.8.1 | User Documentation | 0.58d | 2015-08-05 | 2015-08-06 | 16, 61 | 0d | Documentation Engineer1; Documentation Engineer2; Documentation Engineer6; Documentation Engineer7; Documentation Engineer8; Documentation Engineer103; Documentation Engineer104; Documentation Engineer105; Documentation Engineer203; Documentation Engineer204 | 46.24h |
| 64 | 1.8.2 | **Review UD** | 6.61d | 2015-08-06 | 2015-08-14 | 63 | 0d |  | 235.36h |
| 65 | 1.8.2.1 | Preparation for UD Review | 4.63d | 2015-08-06 | 2015-08-13 | 63 | 0d | Requirement Engineer 102; Documentation Engineer205; System Engineer205; Requirement Engineer 103 | 148.16h |
| 66 | 1.8.2.2 | Review UD Meeting | 1.77d | 2015-08-13 | 2015-08-14 | 65 | 0d | Requirement Engineer 102; Documentation Engineer205; System Engineer205; Requirement Engineer 103; Documentation Engineer1 | 70.8h |
| 67 | 1.8.2.3 | Rework | 0.2d | 2015-08-14 | 2015-08-14 | 66 | 0d | Documentation Engineer1; Documentation Engineer2; Documentation Engineer6; Documentation Engineer7; Documentation Engineer8; Documentation Engineer103; Documentation Engineer104; Documentation Engineer105; Documentation Engineer203; Documentation Engineer204 | 16.4h |
| 68 | 1.9 | **Training Material** | 3.4d | 2015-08-14 | 2015-08-20 | 67 | 0d |  | 136.32h |
| 69 | 1.9.1 | Tutorial | 0.25d | 2015-08-14 | 2015-08-17 | 67 | 0d | Documentation Engineer1; Documentation Engineer2; Documentation Engineer6; Documentation Engineer7; Documentation Engineer8; Documentation Engineer103; Documentation Engineer104; Documentation Engineer105; Documentation Engineer203; Documentation Engineer204 | 20h |
| 70 | 1.9.2 | **Review Tutorial** | 3.15d | 2015-08-17 | 2015-08-20 | 69 | 0d |  | 116.32h |
| 71 | 1.9.2.1 | Preparation for Tutorial Review | 2d | 2015-08-17 | 2015-08-19 | 69 | 0d | Requirement Engineer 102; Documentation Engineer205; Requirement Engineer 103; System Engineer205 | 64h |
| 72 | 1.9.2.2 | Review Tutorial Meeting | 1d | 2015-08-19 | 2015-08-20 | 71 | 0d | Requirement Engineer 102; Documentation Engineer205; Requirement Engineer 103; System Engineer205; Documentation Engineer1 | 40h |
| 73 | 1.9.2.3 | Rework | 0.15d | 2015-08-20 | 2015-08-20 | 72 | 0d | Documentation Engineer1; Documentation Engineer2; Documentation Engineer6; Documentation Engineer7; Documentation Engineer8; Documentation Engineer103; Documentation Engineer104; Documentation Engineer105; Documentation Engineer203; Documentation Engineer204 | 12.32h |
